# Cronograma [Rossi Itajubá] FINALIZADO

Schedule from MS Project, 2017-10-04 to 2019-10-02, costs in R$, A marks actual dates.

## Calendars

- Padrão: Mon-Fri 08:00-12:00, 13:00-17:00; Sat-Sun off.

## Resources

| Resource | Rate |
| --- | --- |
| Gabriela | 50 |
| Adriana | 50 |
| GP Externo | 100 |
| Juliana | 50 |
| Luã | 90 |
| Beatriz | 50 |
| Lua |  |
| Mateus |  |
| Rodrigo |  |
| Fábio |  |
| Daniel |  |
| Jhonatan |  |
| Jonathan |  |

## Schedule

| ID | WBS | Task | Duration | Start | Finish | Predecessors | Complete | Actual start | Actual finish | Baseline start | Baseline finish | Baseline duration | Baseline 1 start | Baseline 1 finish | Constraint | Resources | Work | Actual work | Cost | Baseline cost | Actual cost |
| --- | --- | --- | --- | --- | --- | --- | --- | --- | --- | --- | --- | --- | --- | --- | --- | --- | --- | --- | --- | --- | --- |
| 1 | 1 | **Projeto - Match de Currículos** | 282.38d | 2018-09-03 09:00 | 2019-10-02 12:00 |  | 100% | 2017-10-16 09:00 | 2018-10-11 10:30 | 2017-08-10 08:00 | 2017-11-23 18:00 | 76.12d | 2017-08-10 08:00 | 2017-11-23 18:00 |  |  | 99.5h | 99.5h | 8,785 | 15,850 | 8,785 |
| 2 | 1.1 | **Prospecção** | 11d | 2018-09-03 09:00 | 2018-09-17 18:00 |  | 100% | 2018-09-10 09:00 | 2018-09-17 11:00 | 2017-08-10 08:00 | 2017-08-16 10:00 | 4.25d | 2017-08-10 08:00 | 2017-08-16 10:00 |  |  | 12h | 12h | 750 | 750 | 750 |
| 3 | 1.1.1 | **PTEC -Proposta Técnica** | 2d | 2018-09-10 09:00 A | 2018-09-11 18:00 |  | 100% |  | 2018-09-11 10:00 | 2017-08-10 08:00 | 2017-08-11 10:00 | 1.25d | 2017-08-10 08:00 | 2017-08-11 10:00 |  |  | 3h | 3h | 150 | 150 | 150 |
| 4 | 1.1.1.1 | Redigir PTEC | 0.25d | 2018-09-10 09:00 A | 2018-09-10 11:00 A |  | 100% |  |  | 2017-08-10 08:00 | 2017-08-10 10:00 | 0.25d | 2017-08-10 08:00 | 2017-08-10 10:00 |  | Fábio | 2h | 2h | 100 | 100 | 100 |
| 5 | 1.1.1.2 | Revisar PTEC | 0.12d | 2018-09-11 09:00 A | 2018-09-11 10:00 A | 4 | 100% |  |  | 2017-08-11 09:00 | 2017-08-11 10:00 | 0.12d | 2017-08-11 09:00 | 2017-08-11 10:00 |  | Daniel | 1h | 1h | 50 | 50 | 50 |
| 6 | 1.1.2 | **ETP - Estimativa de Tamanho Preliminar** | 3d | 2018-09-13 09:00 A | 2018-09-17 18:00 |  | 100% |  | 2018-09-17 09:00 | 2017-08-11 09:00 | 2017-08-14 10:00 | 1.12d | 2017-08-11 09:00 | 2017-08-14 10:00 |  |  | 3h | 3h | 150 | 150 | 150 |
| 7 | 1.1.2.1 | Elaborar ETP | 0.25d | 2018-09-13 09:00 A | 2018-09-13 11:00 A | 5 | 100% |  |  | 2017-08-11 09:00 | 2017-08-11 11:00 | 0.25d | 2017-08-11 09:00 | 2017-08-11 11:00 |  | Mateus | 2h | 2h | 100 | 100 | 100 |
| 8 | 1.1.2.2 | Revisar ETP | 0.12d | 2018-09-16 09:00 A | 2018-09-17 09:00 A | 7 | 100% |  |  | 2017-08-14 09:00 | 2017-08-14 10:00 | 0.12d | 2017-08-14 09:00 | 2017-08-14 10:00 |  | Rodrigo | 1h | 1h | 50 | 50 | 50 |
| 9 | 1.1.3 | **CRP e ORP - Cronograma e Orçamento Preliminares** | 1d | 2018-09-17 09:00 A | 2018-09-17 18:00 |  | 100% |  | 2018-09-17 11:00 | 2017-08-14 09:00 | 2017-08-15 10:00 | 1.12d | 2017-08-14 09:00 | 2017-08-15 10:00 |  |  | 3h | 3h | 150 | 150 | 150 |
| 10 | 1.1.3.1 | Elaborar CRP e ORP | 0.25d | 2018-09-17 09:00 A | 2018-09-17 11:00 A | 8 | 100% |  |  | 2017-08-14 09:00 | 2017-08-14 11:00 | 0.25d | 2017-08-14 09:00 | 2017-08-14 11:00 |  | Mateus | 2h | 2h | 100 | 100 | 100 |
| 11 | 1.1.3.2 | Revisar CRP e ORP | 0.12d | 2018-09-17 09:00 A | 2018-09-17 10:00 A | 10 | 100% |  |  | 2017-08-15 09:00 | 2017-08-15 10:00 | 0.12d | 2017-08-15 09:00 | 2017-08-15 10:00 |  | Fábio | 1h | 1h | 50 | 50 | 50 |
| 12 | 1.1.4 | **Aprovações - Prospecção** | 0.12d | 2018-09-17 09:00 A | 2018-09-17 10:00 A |  | 100% |  |  | 2017-08-16 09:00 | 2017-08-16 10:00 | 0.12d | 2017-08-16 09:00 | 2017-08-16 10:00 |  |  | 3h | 3h | 300 | 300 | 300 |
| 13 | 1.1.4.1 | Aprovar PTEC | 0.12d | 2018-09-17 09:00 A | 2018-09-17 10:00 A | 5 | 100% |  |  | 2017-08-16 09:00 | 2017-08-16 10:00 | 0.12d | 2017-08-16 09:00 | 2017-08-16 10:00 |  | GP Externo | 1h | 1h | 100 | 100 | 100 |
| 14 | 1.1.4.2 | Aprovar ETP | 0.12d | 2018-09-17 09:00 A | 2018-09-17 10:00 A | 8 | 100% |  |  | 2017-08-16 09:00 | 2017-08-16 10:00 | 0.12d | 2017-08-16 09:00 | 2017-08-16 10:00 | finish no earlier than 2017-08-15 18:00 | GP Externo | 1h | 1h | 100 | 100 | 100 |
| 15 | 1.1.4.3 | Aprovar CRP e ORP | 0.12d | 2018-09-17 09:00 A | 2018-09-17 10:00 A | 11 | 100% |  |  | 2017-08-16 09:00 | 2017-08-16 10:00 | 0.12d | 2017-08-16 09:00 | 2017-08-16 10:00 | finish no earlier than 2017-08-16 18:00 | GP Externo | 1h | 1h | 100 | 100 | 100 |
| 16 | 1.2 | **Planejamento** | 8d | 2018-09-18 09:00 | 2018-09-27 18:00 |  | 100% | 2018-09-17 09:00 | 2018-09-27 10:00 | 2017-08-17 09:00 | 2017-08-23 10:00 | 4.12d | 2017-08-17 09:00 | 2017-08-23 10:00 |  |  | 18h | 18h | 1,100 | 1,100 | 1,100 |
| 17 | 1.2.1 | **EAP** | 0.25d | 2018-09-18 09:00 A | 2018-09-18 11:00 A |  | 100% |  |  | 2017-08-17 09:00 | 2017-08-17 11:00 | 0.25d | 2017-08-17 09:00 | 2017-08-17 11:00 |  |  | 3h | 3h | 150 | 150 | 150 |
| 18 | 1.2.1.1 | Elaborar EAP | 0.25d | 2018-09-18 09:00 A | 2018-09-18 11:00 A | 15 | 100% |  |  | 2017-08-17 09:00 | 2017-08-17 11:00 | 0.25d | 2017-08-17 09:00 | 2017-08-17 11:00 |  | Rodrigo | 2h | 2h | 100 | 100 | 100 |
| 19 | 1.2.1.2 | Revisar EAP | 0.12d | 2018-09-18 09:00 A | 2018-09-18 10:00 A | 18 | 100% |  |  | 2017-08-17 09:00 | 2017-08-17 10:00 | 0.12d | 2017-08-17 09:00 | 2017-08-17 10:00 |  | Mateus | 1h | 1h | 50 | 50 | 50 |
| 20 | 1.2.2 | **Plano de Projeto** | 1.12d | 2018-09-19 09:00 | 2018-09-20 10:00 |  | 100% | 2018-09-17 09:00 | 2018-09-18 10:00 | 2017-08-17 09:00 | 2017-08-18 10:00 | 1.12d | 2017-08-17 09:00 | 2017-08-18 10:00 |  |  | 3h | 3h | 150 | 150 | 150 |
| 21 | 1.2.2.1 | Elaborar Plano de Projeto | 0.25d | 2018-09-17 09:00 A | 2018-09-17 11:00 A | 19 | 100% |  |  | 2017-08-17 09:00 | 2017-08-17 11:00 | 0.25d | 2017-08-17 09:00 | 2017-08-17 11:00 |  | Jonathan | 2h | 2h | 100 | 100 | 100 |
| 22 | 1.2.2.2 | Revisar Plano de Projeto | 0.12d | 2018-09-18 09:00 A | 2018-09-18 10:00 A | 21 | 100% |  |  | 2017-08-18 09:00 | 2017-08-18 10:00 | 0.12d | 2017-08-18 09:00 | 2017-08-18 10:00 |  | Daniel | 1h | 1h | 50 | 50 | 50 |
| 23 | 1.2.3 | **ETD - Estimativa de Tamanho Definitiva** | 1.12d | 2018-09-19 09:00 A | 2018-09-20 10:00 A |  | 100% |  |  | 2017-08-18 09:00 | 2017-08-21 10:00 | 1.12d | 2017-08-18 09:00 | 2017-08-21 10:00 |  |  | 3h | 3h | 150 | 150 | 150 |
| 24 | 1.2.3.1 | Elaborar EDT | 0.25d | 2018-09-19 09:00 A | 2018-09-19 11:00 A | 22 | 100% |  |  | 2017-08-18 09:00 | 2017-08-18 11:00 | 0.25d | 2017-08-18 09:00 | 2017-08-18 11:00 |  | Mateus | 2h | 2h | 100 | 100 | 100 |
| 25 | 1.2.3.2 | Revisar EDT | 0.12d | 2018-09-20 09:00 A | 2018-09-20 10:00 A | 24 | 100% |  |  | 2017-08-21 09:00 | 2017-08-21 10:00 | 0.12d | 2017-08-21 09:00 | 2017-08-21 10:00 |  | Rodrigo | 1h | 1h | 50 | 50 | 50 |

| ID | WBS | Task | Type | Duration | Start | Finish | Predecessors | Complete | Actual start | Actual finish | Baseline start | Baseline finish | Baseline duration | Baseline 1 start | Baseline 1 finish | Constraint | Resources | Work | Actual work | Cost | Baseline cost | Actual cost |
| --- | --- | --- | --- | --- | --- | --- | --- | --- | --- | --- | --- | --- | --- | --- | --- | --- | --- | --- | --- | --- | --- | --- |
| 26 | 1.2.4 | **CRD e ORD - Cronograma e Orçamento Definitivo** |  | 1.12d | 2018-09-21 09:00 A | 2018-09-24 10:00 A |  | 100% |  |  | 2017-08-21 09:00 | 2017-08-22 10:00 | 1.12d | 2017-08-21 09:00 | 2017-08-22 10:00 |  |  | 5h | 5h | 250 | 250 | 250 |
| 27 | 1.2.4.1 | Elaborar CRD e ORD |  | 0.5d | 2018-09-21 09:00 A | 2018-09-21 14:00 A | 25 | 100% |  |  | 2017-08-21 09:00 | 2017-08-21 14:00 | 0.5d | 2017-08-21 09:00 | 2017-08-21 14:00 |  | Mateus | 4h | 4h | 200 | 200 | 200 |
| 28 | 1.2.4.2 | Revisar CRD e ORD |  | 0.12d | 2018-09-24 09:00 A | 2018-09-24 10:00 A | 27 | 100% |  |  | 2017-08-22 09:00 | 2017-08-22 10:00 | 0.12d | 2017-08-22 09:00 | 2017-08-22 10:00 |  | Fábio | 1h | 1h | 50 | 50 | 50 |
| 29 | 1.2.5 | **Aprovações - Planejamento** |  | 2d | 2018-09-26 09:00 A | 2018-09-27 18:00 |  | 100% |  | 2018-09-27 10:00 | 2017-08-23 09:00 | 2017-08-23 10:00 | 0.12d | 2017-08-23 09:00 | 2017-08-23 10:00 |  |  | 4h | 4h | 400 | 400 | 400 |
| 30 | 1.2.5.1 | Aprovar EAP |  | 0.12d | 2018-09-26 09:00 A | 2018-09-26 10:00 A | 28 | 100% |  |  | 2017-08-23 09:00 | 2017-08-23 10:00 | 0.12d | 2017-08-23 09:00 | 2017-08-23 10:00 |  | GP Externo | 1h | 1h | 100 | 100 | 100 |
| 31 | 1.2.5.2 | Aprovar Plano de Projeto |  | 0.12d | 2018-09-26 09:00 A | 2018-09-26 10:00 A | 30 | 100% |  |  | 2017-08-23 09:00 | 2017-08-23 10:00 | 0.12d | 2017-08-23 09:00 | 2017-08-23 10:00 |  | GP Externo | 1h | 1h | 100 | 100 | 100 |
| 32 | 1.2.5.3 | Aprovar ETD |  | 0.12d | 2018-09-27 09:00 A | 2018-09-27 10:00 A | 31 | 100% |  |  | 2017-08-23 09:00 | 2017-08-23 10:00 | 0.12d | 2017-08-23 09:00 | 2017-08-23 10:00 |  | GP Externo | 1h | 1h | 100 | 100 | 100 |
| 33 | 1.2.5.4 | Aprovar CRD e ORD |  | 0.12d | 2018-09-27 09:00 A | 2018-09-27 10:00 A | 32 | 100% |  |  | 2017-08-23 09:00 | 2017-08-23 10:00 | 0.12d | 2017-08-23 09:00 | 2017-08-23 10:00 |  | GP Externo | 1h | 1h | 100 | 100 | 100 |
| 34 | 1.3 | **Analise** |  | 5.11d? | 2018-09-28 09:00 A | 2018-10-05 09:52 A |  | 100% |  |  | 2017-08-24 09:00 | 2017-08-25 13:40 | 1.46d? | 2017-08-24 09:00 | 2017-08-25 13:40 |  |  | 8h | 8h | 400 | 400 | 400 |
| 35 | 1.3.1 | **Documento de Requisitos** |  | 3.12d | 2018-09-28 09:00 A | 2018-10-03 10:00 A |  | 100% |  |  | 2017-08-24 09:00 | 2017-08-24 10:00 | 0.12d | 2017-08-24 09:00 | 2017-08-24 10:00 |  |  | 5h | 5h | 250 | 250 | 250 |
| 36 | 1.3.1.1 | Especificar Requisitos Funcionais do Sistema |  | 0.12d | 2018-09-28 09:00 A | 2018-09-28 10:00 A | 33 | 100% |  |  | 2017-08-24 09:00 | 2017-08-24 10:00 | 0.12d | 2017-08-24 09:00 | 2017-08-24 10:00 | start no earlier than 2018-09-28 09:00 | Fábio; Daniel | 2h | 2h | 100 | 100 | 100 |
| 37 | 1.3.1.2 | Elaborar DRE |  | 0.05d | 2018-10-02 09:00 A | 2018-10-02 09:24 A | 36 | 100% |  |  | 2017-08-24 09:00 | 2017-08-24 10:00 | 0.12d | 2017-08-24 09:00 | 2017-08-24 10:00 | start no earlier than 2018-10-02 09:00 | Daniel; Fábio; Jonathan; Rodrigo; Mateus | 2h | 2h | 100 | 100 | 100 |
| 38 | 1.3.1.3 | Realizar correções no DRE |  | 0.12d | 2018-10-03 09:00 A | 2018-10-03 10:00 A | 37 | 100% |  |  | 2017-08-24 09:00 | 2017-08-24 10:00 | 0.12d | 2017-08-24 09:00 | 2017-08-24 10:00 | start no earlier than 2018-10-03 09:00 | Mateus | 1h | 1h | 50 | 50 | 50 |
| 39 | 1.3.2 | **Matriz de Rastreabilidade** |  | 0.11d? | 2018-10-05 09:00 A | 2018-10-05 09:52 A |  | 100% |  |  | 2017-08-25 09:00 | 2017-08-25 13:40 | 0.46d? | 2017-08-25 09:00 | 2017-08-25 13:40 |  |  | 3h | 3h | 150 | 150 | 150 |
| 40 | 1.3.2.1 | Elaborar a Matriz | manual | 0.08d | 2018-10-05 09:00 A | 2018-10-05 09:40 A | 38 | 100% |  |  | 2017-08-25 09:00 | 2017-08-25 09:40 | 0.08d | 2017-08-25 09:00 | 2017-08-25 09:40 | start no earlier than 2018-10-05 09:00 | Fábio; Jonathan; Daniel | 2h | 2h | 100 | 100 | 100 |
| 41 | 1.3.2.2 | Revistar a Matriz |  | 0.03d? | 2018-10-05 09:40 A | 2018-10-05 09:52 A | 40 | 100% |  |  | 2017-08-25 13:20 | 2017-08-25 13:40 | 0.04d? | 2017-08-25 13:20 | 2017-08-25 13:40 | start no earlier than 2017-08-17 09:00 | Mateus; Rodrigo; Fábio; Daniel; Jonathan | 1h | 1h | 50 | 50 | 50 |
| 42 | 1.4 | **Release** |  | 60.12d | 2018-10-05 09:00 | 2018-12-28 10:00 |  | 100% | 2017-10-16 09:00 | 2018-10-11 10:30 | 2017-09-01 08:00 | 2017-11-23 18:00 | 60.12d | 2017-09-01 08:00 | 2017-11-23 18:00 |  |  | 61.5h | 61.5h | 6,535 | 13,600 | 6,535 |
| 43 | 1.4.1 | **Modelagem do Banco de Dados** |  | 9.31d | 2018-10-05 09:00 A | 2018-10-18 11:30 |  | 100% |  | 2018-10-11 10:30 | 2017-09-01 08:00 | 2017-09-14 10:30 | 9.31d | 2017-09-01 08:00 | 2017-09-14 10:30 |  |  | 6h | 6h | 300 | 300 | 300 |
| 44 | 1.4.1.1 | Modelo E-R |  | 0.19d | 2018-10-05 09:00 A | 2018-10-08 09:00 A | 41 | 100% |  |  | 2017-09-01 08:00 | 2017-09-01 18:00 | 0.19d | 2017-09-01 08:00 | 2017-09-01 18:00 | finish no earlier than 2017-09-01 18:00 | Daniel | 1.5h | 1.5h | 75 | 75 | 75 |
| 45 | 1.4.1.2 | Modelo Lógico |  | 0.19d | 2018-10-09 09:00 A | 2018-10-09 10:30 A | 44 | 100% |  |  | 2017-09-12 09:00 | 2017-09-12 10:30 | 0.19d | 2017-09-12 09:00 | 2017-09-12 10:30 | start no earlier than 2017-09-12 09:00 | Daniel | 1.5h | 1.5h | 75 | 75 | 75 |
| 46 | 1.4.1.3 | Modelo Físico |  | 0.19d | 2018-10-10 09:00 A | 2018-10-10 10:30 A | 45 | 100% |  |  | 2017-09-13 09:00 | 2017-09-13 10:30 | 0.19d | 2017-09-13 09:00 | 2017-09-13 10:30 | start no earlier than 2017-09-13 09:00 | Daniel | 1.5h | 1.5h | 75 | 75 | 75 |
| 47 | 1.4.1.4 | Revisar a modelagem do Banco de Dados |  | 0.19d | 2018-10-11 09:00 A | 2018-10-11 10:30 A | 46 | 100% |  |  | 2017-09-14 09:00 | 2017-09-14 10:30 | 0.19d | 2017-09-14 09:00 | 2017-09-14 10:30 | start no earlier than 2017-09-14 09:00 | Fábio | 1.5h | 1.5h | 75 | 75 | 75 |
| 48 | 1.4.2 | **Implementação e Teste** |  | 37d | 2017-10-04 09:00 | 2017-11-23 18:00 |  | 100% | 2017-10-16 09:00 | 2017-11-23 11:00 | 2017-10-04 09:00 | 2017-11-23 18:00 | 37d | 2017-10-04 09:00 | 2017-11-23 18:00 |  |  | 55.5h | 55.5h | 6,235 | 13,300 | 6,235 |
| 49 | 1.4.2.1 | **Release 1** |  | 4d | 2017-10-16 09:00 A | 2017-10-20 09:00 |  | 100% |  | 2017-10-19 11:00 | 2017-10-16 09:00 | 2017-10-20 09:00 | 4d | 2017-10-16 09:00 | 2017-10-20 09:00 |  |  | 21h | 21h | 3,410 | 4,680 | 3,410 |
| 50 | 1.4.2.1.1 | [RFS001] Cadastrar Pessoa |  | 0.75d? | 2017-10-16 09:00 A | 2017-10-16 16:00 A | 47 | 100% |  |  | 2017-10-16 09:00 | 2017-10-16 14:00 | 0.5d? | 2017-10-16 09:00 | 2017-10-16 14:00 |  | Jonathan | 6h | 6h | 540 | 360 | 540 |
| 51 | 1.4.2.1.2 | [RFS002] Cadastrar Empresa |  | 0.25d? | 2017-10-16 09:00 A | 2017-10-16 11:00 A | 50 | 100% |  |  | 2017-10-16 09:00 | 2017-10-16 14:00 | 0.5d? | 2017-10-16 09:00 | 2017-10-16 14:00 |  | Jonathan | 2h | 2h | 100 | 360 | 100 |
| 52 | 1.4.2.1.3 | [RFS008] Consultar Pessoa |  | 0.25d? | 2017-10-17 09:00 A | 2017-10-17 11:00 A | 51 | 100% |  |  | 2017-10-17 09:00 | 2017-10-17 14:00 | 0.5d? | 2017-10-17 09:00 | 2017-10-17 14:00 |  | Jonathan | 2h | 2h | 180 | 360 | 180 |
| 53 | 1.4.2.1.4 | [RFS009] Consultar Empresa |  | 0.12d? | 2017-10-17 09:00 A | 2017-10-17 10:00 A | 52 | 100% |  |  | 2017-10-17 09:00 | 2017-10-17 14:00 | 0.5d? | 2017-10-17 09:00 | 2017-10-17 14:00 |  | Jonathan | 1h | 1h | 90 | 360 | 90 |
| 54 | 1.4.2.1.5 | [RFS011] Alterar Pessoa |  | 0.5d | 2017-10-18 09:00 A | 2017-10-18 14:00 A | 53 | 100% |  |  | 2017-10-18 09:00 | 2017-10-18 16:24 | 0.8d | 2017-10-18 09:00 | 2017-10-18 16:24 |  | Jonathan | 4h | 4h | 810 | 810 | 810 |
| 55 | 1.4.2.1.6 | [RFS012] Alterar Empresa |  | 0.38d | 2017-10-18 09:00 A | 2017-10-18 15:00 A | 54 | 100% |  |  | 2017-10-18 09:00 | 2017-10-18 14:00 | 0.5d | 2017-10-18 09:00 | 2017-10-18 14:00 |  | Fábio | 3h | 3h | 600 | 810 | 600 |
| 56 | 1.4.2.1.7 | [RFS015] Remover Pessoa |  | 0.25d | 2017-10-19 09:00 A | 2017-10-19 11:00 A | 55 | 100% |  |  | 2017-10-19 09:00 | 2017-10-19 14:00 | 0.5d | 2017-10-19 09:00 | 2017-10-19 14:00 |  | Fábio | 2h | 2h | 550 | 810 | 550 |
| 57 | 1.4.2.1.8 | [RFS016] Remover Empresa |  | 0.12d | 2017-10-19 09:00 A | 2017-10-19 10:00 A | 56 | 100% |  |  | 2017-10-19 09:00 | 2017-10-19 14:00 | 0.5d | 2017-10-19 09:00 | 2017-10-19 14:00 |  | Jonathan | 1h | 1h | 540 | 810 | 540 |

| ID | WBS | Task | Type | Duration | Start | Finish | Predecessors | Complete | Actual finish | Baseline start | Baseline finish | Baseline duration | Baseline 1 start | Baseline 1 finish | Constraint | Resources | Work | Actual work | Cost | Baseline cost | Actual cost |
| --- | --- | --- | --- | --- | --- | --- | --- | --- | --- | --- | --- | --- | --- | --- | --- | --- | --- | --- | --- | --- | --- |
| 58 | 1.4.2.2 | **Teste** |  | 0.75d | 2017-10-20 09:00 A | 2017-10-20 16:00 |  | 100% | 2017-10-20 11:00 | 2017-10-20 09:00 | 2017-10-20 16:00 | 0.75d | 2017-10-20 09:00 | 2017-10-20 16:00 |  |  | 2h | 2h | 100 | 150 | 100 |
| 59 | 1.4.2.2.1 | Teste e Validação do Release 1 |  | 0.25d | 2017-10-20 09:00 A | 2017-10-20 11:00 A | 57 | 100% |  | 2017-10-20 09:00 | 2017-10-20 12:00 | 0.38d | 2017-10-20 09:00 | 2017-10-20 12:00 | finish no earlier than 2017-10-09 18:00 | Mateus | 2h | 2h | 100 | 150 | 100 |
| 60 | 1.4.2.3 | **Release 2** |  | 5d | 2017-10-27 09:00 A | 2017-11-02 18:00 |  | 100% | 2017-11-01 17:00 | 2017-10-27 09:00 | 2017-11-02 18:00 | 5d | 2017-10-27 09:00 | 2017-11-02 18:00 |  |  | 15h | 15h | 1,350 | 2,160 | 1,350 |
| 61 | 1.4.2.3.1 | [RFS003] Cadastrar Currículo |  | 0.62d | 2017-10-27 09:00 A | 2017-10-27 15:00 A | 59 | 100% |  | 2017-10-27 09:00 | 2017-10-27 14:00 | 0.5d | 2017-10-27 09:00 | 2017-10-27 14:00 | start no earlier than 2017-10-27 09:00 | Jonathan | 5h | 5h | 450 | 360 | 450 |
| 62 | 1.4.2.3.2 | [RFS004] Cadastrar Habilidades |  | 0.25d | 2017-10-30 09:00 A | 2017-10-30 11:00 A | 61 | 100% |  | 2017-10-30 09:00 | 2017-10-30 14:00 | 0.5d | 2017-10-30 09:00 | 2017-10-30 14:00 |  | Jonathan | 2h | 2h | 180 | 360 | 180 |
| 63 | 1.4.2.3.3 | [RFS013] Alterar Currículo |  | 0.12d | 2017-10-30 14:00 A | 2017-10-30 15:00 A | 62 | 100% |  | 2017-10-30 14:00 | 2017-10-30 18:00 | 0.38d | 2017-10-30 14:00 | 2017-10-30 18:00 |  | Jonathan | 1h | 1h | 90 | 270 | 90 |
| 64 | 1.4.2.3.4 | [RFS007] Consultar Currículo |  | 0.25d? | 2017-10-31 14:00 A | 2017-10-31 16:00 A | 63 | 100% |  | 2017-10-31 14:00 | 2017-10-31 17:00 | 0.38d? | 2017-10-31 14:00 | 2017-10-31 18:00 |  | Jonathan | 2h | 2h | 180 | 270 | 180 |
| 65 | 1.4.2.3.5 | [RFS017] Remover Currículo |  | 0.38d? | 2017-11-01 14:00 A | 2017-11-01 17:00 A | 64 | 100% |  | 2017-11-01 09:00 | 2017-11-01 14:00 | 0.5d? | 2017-11-01 09:00 | 2017-11-01 14:00 | start no earlier than 2017-11-01 14:00 | Jonathan | 3h | 3h | 270 | 360 | 270 |
| 66 | 1.4.2.3.6 | [RFS019] Controlar Currículo dos Candidatos |  | 0.25d? | 2017-11-01 09:00 A | 2017-11-01 11:00 A |  | 100% |  | 2017-11-01 09:00 | 2017-11-01 12:00 | 0.38d? |  |  |  | Jonathan | 2h | 2h | 180 | 270 | 180 |
| 67 | 1.4.2.4 | **Teste** |  | 1d | 2017-11-09 09:00 A | 2017-11-09 18:00 |  | 100% | 2017-11-09 11:00 | 2017-11-09 09:00 | 2017-11-09 18:00 | 1d | 2017-11-09 09:00 | 2017-11-09 18:00 |  |  | 2h | 2h | 100 | 150 | 100 |
| 68 | 1.5.1.10 | Teste e Validação do Release 2 |  | 0.25d | 2017-11-09 09:00 A | 2017-11-09 11:00 A | 66 | 100% |  | 2017-11-09 09:00 | 2017-11-09 10:30 | 0.19d | 2017-11-09 09:00 | 2017-11-09 10:30 |  | Fábio; Mateus | 2h | 2h | 100 | 150 | 100 |
| 69 | 1.5.1.11 | **Release 3** |  | 5d | 2017-11-10 09:00 A | 2017-11-16 18:00 |  | 100% | 2017-11-14 15:00 | 2017-11-10 09:00 | 2017-11-16 18:00 | 5d | 2017-11-10 09:00 | 2017-11-16 18:00 |  |  | 12.5h | 12.5h | 1,125 | 2,700 | 1,125 |
| 70 | 1.4.2.5.1 | [RFS005] Cadastrar Interesse |  | 0.5d? | 2017-11-10 09:00 A | 2017-11-10 14:00 A | 68 | 100% |  | 2017-11-10 09:00 | 2017-11-10 14:00 | 0.5d? | 2017-11-10 09:00 | 2017-11-10 14:00 |  | Jonathan | 4h | 4h | 360 | 360 | 360 |
| 71 | 1.4.2.5.2 | [RFS006] Consultar Combinações |  | 0.25d? | 2017-11-10 14:00 A | 2017-11-10 16:00 A | 70 | 100% |  | 2017-11-10 14:00 | 2017-11-13 09:00 | 0.5d? | 2017-11-10 14:00 | 2017-11-13 09:00 | finish no earlier than 2017-11-10 18:00 | Jonathan | 2h | 2h | 180 | 360 | 180 |
| 72 | 1.4.2.5.3 | [RFS010] Consultar Interesses |  | 0.12d? | 2017-11-13 09:00 A | 2017-11-13 10:00 A | 71 | 100% |  | 2017-11-13 09:00 | 2017-11-13 14:00 | 0.5d? | 2017-11-13 09:00 | 2017-11-13 14:00 |  | Jonathan | 1h | 1h | 90 | 360 | 90 |
| 73 | 1.4.2.5.4 | [RFS014] Alterar Interesses |  | 0.06d? | 2017-11-13 14:00 A | 2017-11-13 14:30 A | 72 | 100% |  | 2017-11-13 14:00 | 2017-11-14 09:00 | 0.5d? | 2017-11-13 14:00 | 2017-11-14 09:00 |  | Jonathan | 0.5h | 0.5h | 45 | 360 | 45 |
| 74 | 1.4.2.5.5 | [RFS018] Remover Interesses |  | 0.62d? | 2017-11-14 09:00 A | 2017-11-14 15:00 A | 73 | 100% |  | 2017-11-14 09:00 | 2017-11-14 14:00 | 0.5d? | 2017-11-14 09:00 | 2017-11-14 14:00 |  | Jonathan | 5h | 5h | 450 | 360 | 450 |
| 78 | 1.4.2.6 | **Teste** |  | 1d | 2017-11-15 09:00 A | 2017-11-15 18:00 |  | 100% | 2017-11-15 09:30 | 2017-11-15 09:00 | 2017-11-15 18:00 | 1d | 2017-11-15 09:00 | 2017-11-15 18:00 |  |  | 1h | 1h | 50 | 150 | 50 |
| 79 | 1.4.2.6.1 | Teste e Validação do Release 3 |  | 0.06d | 2017-11-15 09:00 A | 2017-11-15 09:30 A |  | 100% |  | 2017-11-15 09:00 | 2017-11-15 10:30 | 0.19d | 2017-11-15 09:00 | 2017-11-15 10:30 |  | Fábio; Mateus | 1h | 1h | 50 | 150 | 50 |
| 80 | 1.4.2.7 | Release 4 | manual | 5d | 2017-11-17 09:00 A | 2017-11-23 18:00 |  | 100% | 2017-11-17 09:00 | 2017-11-17 09:00 | 2017-11-23 18:00 | 5d | 2017-11-17 09:00 | 2017-11-23 18:00 |  |  |  |  |  | 3,060 |  |
| 90 | 1.4.2.8 | **Teste** |  | 1d | 2017-11-23 09:00 A | 2017-11-23 18:00 |  | 100% | 2017-11-23 11:00 | 2017-11-23 09:00 | 2017-11-23 18:00 | 1d | 2017-11-23 09:00 | 2017-11-23 18:00 |  |  | 2h | 2h | 100 | 250 | 100 |
| 91 | 1.4.2.8.1 | Teste e Validação do Release 4 |  | 0.25d | 2017-11-23 09:00 A | 2017-11-23 11:00 A |  | 100% |  | 2017-11-23 09:00 | 2017-11-23 12:00 | 0.38d | 2017-11-23 09:00 | 2017-11-23 12:00 |  | Mateus | 2h | 2h | 100 | 150 | 100 |
| 92 | 1.4.2.8.2 | Aprovação do Documento | milestone | 0d | 2017-11-23 11:00 A | 2017-11-23 11:00 A | 91 | 100% |  | 2017-11-23 13:00 | 2017-11-23 14:00 | 0.12d | 2017-11-23 13:00 | 2017-11-23 14:00 | finish no earlier than 2017-10-25 18:00 | GP Externo |  |  |  | 100 |  |
